# SGI

Schedule from MS Project, 2012-09-24 to 2013-02-12.

## Calendars

- Estándar: Mon-Fri 09:00-13:00, 15:00-19:00; Sat-Sun off.

## Resources

| Resource |
| --- |
| CPSAA |

## Schedule

| ID | WBS | Task | Duration | Start | Finish | Predecessors | Total slack | Constraint | Resources | Work |
| --- | --- | --- | --- | --- | --- | --- | --- | --- | --- | --- |
| 1 | 1 | **Bitacora de Operaciones** | 102d? | 2012-09-24 | 2013-02-12 |  | 0d |  |  | 32h |
| 2 | 1.1 | **Levantamiento de información** | 24d | 2012-09-24 | 2012-10-25 |  | 0d |  |  | 32h |
| 3 | 1.1.1 | **Realizar reunión de levantamiento de información** | 10d | 2012-09-24 | 2012-10-05 |  | 14d |  |  |  |
| 4 | 1.1.1.1 | 1 | 1d | 2012-09-24 | 2012-09-24 |  | 9d | start no earlier than 2012-09-24 |  |  |
| 5 | 1.1.1.2 | 2 | 1d | 2012-09-25 | 2012-09-25 |  | 8d | start no earlier than 2012-09-25 |  |  |
| 6 | 1.1.1.3 | 3 | 1d | 2012-09-26 | 2012-09-26 |  | 7d | start no earlier than 2012-09-26 |  |  |
| 7 | 1.1.1.4 | 4 | 1d | 2012-09-27 | 2012-09-27 |  | 6d | start no earlier than 2012-09-27 |  |  |
| 8 | 1.1.1.5 | 5 | 1d | 2012-09-28 | 2012-09-28 |  | 5d | start no earlier than 2012-09-28 |  |  |
| 9 | 1.1.1.6 | 6 | 1d | 2012-10-01 | 2012-10-01 |  | 4d | start no earlier than 2012-09-29 |  |  |
| 10 | 1.1.1.7 | 9 | 1d | 2012-10-02 | 2012-10-02 |  | 3d | start no earlier than 2012-10-02 |  |  |
| 11 | 1.1.1.8 | 10 | 1d | 2012-10-03 | 2012-10-03 |  | 2d | start no earlier than 2012-10-03 |  |  |
| 12 | 1.1.1.9 | 11 | 1d | 2012-10-04 | 2012-10-04 |  | 1d | start no earlier than 2012-10-04 |  |  |
| 13 | 1.1.1.10 | 12 | 1d | 2012-10-05 | 2012-10-05 |  | 1d | start no earlier than 2012-10-05 |  |  |
| 14 | 1.1.2 | Realizar formularios de aplicación | 10d | 2012-09-24 | 2012-10-05 |  | 0d | start no earlier than 2012-09-24 |  |  |
| 15 | 1.1.3 | Elaborar BBP | 14d | 2012-09-24 | 2012-10-11 |  | 1d | start no earlier than 2012-09-24 |  |  |
| 16 | 1.1.4 | **Definición de arquitectura de aplicación** | 5d | 2012-10-08 | 2012-10-12 | 14 | 0d |  |  |  |
| 17 | 1.1.4.1 | Coordinar definición de arquitectura de aplicación | 2d | 2012-10-08 | 2012-10-09 |  | 0d |  |  |  |
| 18 | 1.1.4.2 | Definir modelo lógico | 3d | 2012-10-10 | 2012-10-12 | 17 | 0d |  |  |  |
| 19 | 1.1.5 | **Aprobación de BBP, arquitectura y formularios** | 9d | 2012-10-15 | 2012-10-25 | 15, 14, 16 | 0d |  |  | 32h |
| 20 | 1.1.5.1 | Revisar propuesta | 3d | 2012-10-15 | 2012-10-17 |  | 0d | start no earlier than 2012-08-24 | CPSAA | 24h |
| 21 | 1.1.5.2 | Realizar ajustes | 5d | 2012-10-18 | 2012-10-24 | 20 | 0d |  |  |  |
| 22 | 1.1.5.3 | Revisión final | 1d | 2012-10-25 | 2012-10-25 | 21 | 0d |  | CPSAA | 8h |
| 23 | 1.2 | **Desarrollo** | 33d? | 2012-10-26 | 2012-12-11 | 2 | 0d |  |  |  |
| 24 | 1.2.1 | **Aplicación Web** | 28d? | 2012-10-26 | 2012-12-04 |  | 0d |  |  |  |
| 25 | 1.2.1.1 | Implementar arquitectura | 2d | 2012-10-26 | 2012-10-29 |  | 5d |  |  |  |

Notes:
- 14: -Uso de herramienta Spencil para dibujar los formularios
- 16: -Usar librerías estandares como jquery / -Framework:spring mvc, hibernate, etc. Se requiere reunión con Miguel Ortiz para ver preferencias.

| ID | WBS | Task | Duration | Start | Finish | Predecessors | Total slack | Free slack |
| --- | --- | --- | --- | --- | --- | --- | --- | --- |
| 26 | 1.2.1.2 | **Modulo ocurrencias** | 7d | 2012-10-26 | 2012-11-05 |  | 21d |  |
| 27 | 1.2.1.2.1 | Implementar modulo | 5d | 2012-10-26 | 2012-11-01 |  | 21d | 0d |
| 28 | 1.2.1.2.2 | Realizar pruebas unitarias | 2d | 2012-11-02 | 2012-11-05 | 27 | 21d |  |
| 29 | 1.2.1.3 | **Modulo paradas** | 9d | 2012-10-26 | 2012-11-07 |  | 19d |  |
| 30 | 1.2.1.3.1 | Implementar modulo | 7d | 2012-10-26 | 2012-11-05 |  | 19d | 0d |
| 31 | 1.2.1.3.2 | Realizar pruebas unitarias | 2d | 2012-11-06 | 2012-11-07 | 30 | 19d |  |
| 32 | 1.2.1.3.3 | **Integración con SAP** | 7d | 2012-10-26 | 2012-11-05 |  | 21d |  |
| 33 | 1.2.1.3.3.1 | Implementar RFC para gestión de avisos | 5d | 2012-10-26 | 2012-11-01 |  | 21d | 0d |
| 34 | 1.2.1.3.3.2 | Realizar Pruebas Unitarias | 2d | 2012-11-02 | 2012-11-05 | 33 | 21d |  |
| 35 | 1.2.1.4 | **Modulo Avisos** | 7d | 2012-10-26 | 2012-11-05 |  | 21d |  |
| 36 | 1.2.1.4.1 | Implementar modulo | 5d | 2012-10-26 | 2012-11-01 |  | 21d | 0d |
| 37 | 1.2.1.4.2 | Realizar pruebas unitarias | 2d | 2012-11-02 | 2012-11-05 | 36 | 21d |  |
| 38 | 1.2.1.4.3 | **Integración con SAP** | 7d | 2012-10-26 | 2012-11-05 |  | 21d |  |
| 39 | 1.2.1.4.3.1 | Implementar RFC para creación de avisos | 5d | 2012-10-26 | 2012-11-01 |  | 21d | 0d |
| 40 | 1.2.1.4.3.2 | Realizar Pruebas Unitarias | 2d | 2012-11-02 | 2012-11-05 | 39 | 21d |  |
| 41 | 1.2.1.5 | **Modulo Movilidad** | 2d? | 2012-10-26 | 2012-10-29 |  | 26d |  |
| 42 | 1.2.1.5.1 | Implementar webservice | 1d? | 2012-10-26 | 2012-10-26 |  | 26d | 0d |
| 43 | 1.2.1.5.2 | Implementar cliente android | 1d? | 2012-10-29 | 2012-10-29 | 42 | 26d |  |
| 44 | 1.2.1.6 | **Modulo cambio de equipo** | 7d | 2012-10-26 | 2012-11-05 |  | 21d |  |
| 45 | 1.2.1.6.1 | Implementar modulo | 5d | 2012-10-26 | 2012-11-01 |  | 21d | 0d |
| 46 | 1.2.1.6.2 | Realizar pruebas unitarias | 2d | 2012-11-02 | 2012-11-05 | 45 | 21d |  |
| 47 | 1.2.1.7 | **Modulo cambio de producto** | 7d | 2012-10-26 | 2012-11-05 |  | 21d |  |
| 48 | 1.2.1.7.1 | Implementar modulo | 5d | 2012-10-26 | 2012-11-01 |  | 21d | 0d |
| 49 | 1.2.1.7.2 | Realizar pruebas unitarias | 2d | 2012-11-02 | 2012-11-05 | 48 | 21d |  |

Notes:
- 29: -Proponer validación de generación de avisos, en caso el usuario se equivoque.
- 42: -Utilizar protocolo REST. / -Crear parada, notificar alerta, login.
- 44: -Implementar modulo con SGCP. Conexión directa o por una interfaz?
- 47: -Implementar modulo con SGCP. Conexión directa o por una interfaz?

| ID | WBS | Task | Duration | Start | Finish | Predecessors | Total slack | Constraint |
| --- | --- | --- | --- | --- | --- | --- | --- | --- |
| 50 | 1.2.1.8 | **Modulo Reportes** | 19d | 2012-10-26 | 2012-11-21 |  | 0d |  |
| 51 | 1.2.1.8.1 | Implementar modulo | 15d | 2012-10-26 | 2012-11-15 |  | 0d |  |
| 52 | 1.2.1.8.2 | Realizar pruebas unitarias | 4d | 2012-11-16 | 2012-11-21 | 51 | 0d |  |
| 53 | 1.2.1.9 | **Modelo Seguridad** | 9d | 2012-11-22 | 2012-12-04 | 52 | 0d |  |
| 54 | 1.2.1.9.1 | Implementar modulo | 7d | 2012-11-22 | 2012-11-30 |  | 0d |  |
| 55 | 1.2.1.9.2 | Realizar pruebas unitarias | 2d | 2012-12-03 | 2012-12-04 | 54 | 0d |  |
| 56 | 1.2.2 | **Integración** | 5d | 2012-12-05 | 2012-12-11 | 24, 50, 53 | 0d |  |
| 57 | 1.2.2.1 | Integrar modulos | 5d | 2012-12-05 | 2012-12-11 |  | 0d |  |
| 58 | 1.3 | **Pruebas** | 20d | 2012-12-12 | 2013-01-08 | 56 | 0d |  |
| 59 | 1.3.1 | Pruebas Unitarias | 10d | 2012-12-12 | 2012-12-25 |  | 0d |  |
| 60 | 1.3.2 | Pruebas Integrales | 10d | 2012-12-26 | 2013-01-08 | 59 | 0d |  |
| 61 | 1.4 | **Pase a producción** | 1d | 2013-01-09 | 2013-01-09 | 58 | 0d |  |
| 62 | 1.4.1 | Realizar pase a producción | 1d | 2013-01-09 | 2013-01-09 |  | 0d |  |
| 63 | 1.5 | **Capacitación** | 7d | 2013-01-10 | 2013-01-18 | 61 | 0d |  |
| 64 | 1.5.1 | Realizar capacitación a usuarios | 7d | 2013-01-10 | 2013-01-18 |  | 0d |  |
| 65 | 1.6 | **Documentación** | 10d | 2013-01-21 | 2013-02-01 | 63 | 0d |  |
| 66 | 1.6.1 | Realizar documentación (manual técnico, modelo y dicc. De datos) | 10d | 2013-01-21 | 2013-02-01 |  | 0d | start no earlier than 2012-10-12 |
| 67 | 1.7 | **Post-Producción** | 7d | 2013-02-04 | 2013-02-12 | 65 | 0d |  |
| 68 | 1.7.1 | Realizar actividades de soporte | 7d | 2013-02-04 | 2013-02-12 |  | 0d |  |

Notes:
- 50: -Implementar 5 tipos de reporte: pareto, tendencia, pie, barras, texto resumen. / -CPSAA tiene preferencias por alguna librería de reportes?. / -Se requiere exportación a xls, pdf? / -Implementar modulo con SGCP. Conexión directa o por una interfaz?
- 53: -Para autenticacion se require webservice?. / -Se requiere programación de perfiles y roles?.
